# TimelineXpress_Overall_Schedule

Schedule from ProjectLibre, 2025-01-30 to 2025-05-08.

## Calendars

- Standard: Mon-Fri 08:00-12:00, 13:00-17:00; Sat-Sun off.

## Resources

| Resource | Rate |
| --- | --- |
| Unassigned |  |
| Walter Ulicki | 100 |
| Gitti Esmailzada | 100 |
| Dana Tryon | 100 |
| Alexandra Lawler | 100 |

## Schedule

| ID | WBS | Task | Duration | Start | Finish | Predecessors | Baseline start | Baseline finish | Constraint | Resources |
| --- | --- | --- | --- | --- | --- | --- | --- | --- | --- | --- |
| 1 | 1 | **Phase 0: Identify Problem, Obtain Approval** | 5d | 2025-01-30 | 2025-02-06 |  | 2025-01-30 | 2025-02-06 | start no earlier than 2025-01-30 |  |
| 2 | 1.1 | Creat Project Proposal Slides | 4d | 2025-01-30 | 2025-02-05 |  | 2025-01-30 | 2025-02-05 |  | Walter Ulicki [25%]; Gitti Esmailzada [25%]; Dana Tryon [25%]; Alexandra Lawler [25%] |
| 3 | 1.2 | PROJECT PROPOSAL DUE | 0d | 2025-02-06 | 2025-02-06 | 2 | 2025-02-06 | 2025-02-06 | start no earlier than 2025-02-06 |  |
| 4 | 2 | **Phase 1: Project Planning** | 10d | 2025-02-06 | 2025-02-20 | 1 | 2025-02-06 | 2025-02-20 |  |  |
| 5 | 2.1 | Write Project Plan document | 8d | 2025-02-06 | 2025-02-18 | 1 | 2025-02-06 | 2025-02-18 |  | Walter Ulicki [25%]; Gitti Esmailzada [25%]; Dana Tryon [25%]; Alexandra Lawler [25%] |
| 6 | 2.2 | Create System Context Diag | 2d | 2025-02-06 | 2025-02-10 | 5SS | 2025-02-06 | 2025-02-10 |  | Gitti Esmailzada [10%]; Dana Tryon [10%]; Alexandra Lawler [10%] |
| 7 | 2.3 | Create Main Schedule | 4d | 2025-02-10 | 2025-02-14 | 6 | 2025-02-10 | 2025-02-14 |  | Walter Ulicki |
| 8 | 2.4 | Review Project Plan and Schedule | 0d | 2025-02-18 | 2025-02-18 | 5, 6, 7 | 2025-02-18 | 2025-02-18 | start no earlier than 2025-02-17 |  |
| 9 | 2.5 | Update Project Plan | 1d | 2025-02-18 | 2025-02-19 | 8 | 2025-02-18 | 2025-02-19 |  | Walter Ulicki |
| 10 | 2.6 | PROJECT PLAN DOCUMENT DUE | 0d | 2025-02-20 | 2025-02-20 | 9 | 2025-02-20 | 2025-02-20 | start no earlier than 2025-02-20 |  |
| 11 | 3 | **Phase 2: Systems Analysis** | 16d | 2025-02-20 | 2025-03-14 | 4 | 2025-02-20 | 2025-03-14 |  |  |
| 12 | 3.1 | Market Research Other Timeline Applications | 10d | 2025-02-20 | 2025-03-06 | 4 | 2025-02-20 | 2025-03-06 |  | Walter Ulicki [50%]; Gitti Esmailzada [50%]; Dana Tryon [50%]; Alexandra Lawler [50%] |
| 13 | 3.2 | Define required information and data elements | 2d | 2025-02-26 | 2025-02-28 | 12SS+4d | 2025-02-26 | 2025-02-28 |  | Dana Tryon; Gitti Esmailzada |
| 14 | 3.3 | Model User Interactions with the Application | 2d | 2025-02-26 | 2025-02-28 | 12SS+4d | 2025-02-26 | 2025-02-28 |  | Walter Ulicki; Alexandra Lawler |
| 15 | 3.4 | Create Systems Requirements Document | 4d | 2025-02-28 | 2025-03-06 | 13, 14 | 2025-02-28 | 2025-03-06 |  | Walter Ulicki; Gitti Esmailzada [25%]; Dana Tryon [25%]; Alexandra Lawler [25%] |
| 16 | 3.5 | Review Systems Requirements Document | 0d | 2025-03-10 | 2025-03-10 | 15 | 2025-03-10 | 2025-03-10 | start no earlier than 2025-03-10 |  |
| 17 | 3.6 | Update Systems Requirements Documents | 1d | 2025-03-10 | 2025-03-11 | 16 | 2025-03-10 | 2025-03-11 |  | Walter Ulicki |
| 18 | 3.7 | SYSTEMS REQUIREMENTS DOCUMENTS DUE | 0d | 2025-03-14 | 2025-03-14 | 17 | 2025-03-14 | 2025-03-14 | start no earlier than 2025-03-14 |  |
| 19 | 4 | **Phase 3: System Design** | 15d | 2025-03-14 | 2025-04-04 | 11 | 2025-03-14 | 2025-04-04 |  |  |
| 20 | 4.1 | Monitor Project Schedule | 2d | 2025-03-14 | 2025-03-18 | 11 | 2025-03-14 | 2025-03-18 |  | Walter Ulicki [25%] |
| 21 | 4.2 | Define Database Schema | 8d | 2025-03-14 | 2025-03-26 | 11 | 2025-03-14 | 2025-03-26 |  | Dana Tryon |
| 22 | 4.3 | Design Screen Layouts | 8d | 2025-03-14 | 2025-03-26 | 11 | 2025-03-14 | 2025-03-26 |  | Alexandra Lawler |
| 23 | 4.4 | Identify Program Classes and Methods | 8d | 2025-03-14 | 2025-03-26 | 11 | 2025-03-14 | 2025-03-26 |  | Gitti Esmailzada |
| 24 | 4.5 | Create System Design Document | 8d | 2025-03-24 | 2025-04-03 | 21FS-2d, 22FS-2d, 23FS-2d | 2025-03-24 | 2025-04-03 |  | Walter Ulicki |
| 25 | 4.6 | Review system Design Document | 0d | 2025-04-03 | 2025-04-03 | 24 | 2025-04-03 | 2025-04-03 | start no earlier than 2025-03-06 |  |
| 26 | 4.7 | Update System Design Document | 1d | 2025-04-03 | 2025-04-04 | 25 | 2025-04-03 | 2025-04-04 |  | Walter Ulicki |
| 27 | 4.8 | SYSTEM DESIGN DOCUMENT DUE | 0d | 2025-04-04 | 2025-04-04 | 26 | 2025-04-04 | 2025-04-04 | start no earlier than 2025-03-13 |  |

| ID | WBS | Task | Duration | Start | Finish | Predecessors | Baseline start | Baseline finish | Constraint | Resources |
| --- | --- | --- | --- | --- | --- | --- | --- | --- | --- | --- |
| 28 | 5 | **Phase 4: Build Phase** | 16d | 2025-04-04 | 2025-04-28 |  | 2025-04-04 | 2025-04-28 |  |  |
| 29 | 5.1 | **Iteration 1: Create First Cut Code** | 8d | 2025-04-04 | 2025-04-16 | 19 | 2025-04-04 | 2025-04-16 |  |  |
| 30 | 5.1.1 | Monitor Project Scedule | 2d | 2025-04-04 | 2025-04-08 | 19 | 2025-04-04 | 2025-04-08 |  | Walter Ulicki [25%] |
| 31 | 5.1.2 | Write Database Code - first cut | 5d | 2025-04-04 | 2025-04-11 | 19 | 2025-04-04 | 2025-04-11 |  | Dana Tryon |
| 32 | 5.1.3 | Write Graphics Code - first cut | 5d | 2025-04-04 | 2025-04-11 | 19 | 2025-04-04 | 2025-04-11 |  | Alexandra Lawler |
| 33 | 5.1.4 | Test Iteration 1 Code | 5d | 2025-04-09 | 2025-04-16 | 31FS-2d, 32FS-2d | 2025-04-09 | 2025-04-16 | start no earlier than 2025-04-03 | Gitti Esmailzada |
| 34 | 5.1.5 | ITERATION #1 CODE DONE | 0d | 2025-04-16 | 2025-04-16 | 33 | 2025-04-16 | 2025-04-16 |  |  |
| 35 | 5.2 | **Iteration 2: Create Second Cut** | 8d | 2025-04-16 | 2025-04-28 | 29 | 2025-04-16 | 2025-04-28 |  |  |
| 36 | 5.2.1 | Monitor Project Schedule | 8d | 2025-04-16 | 2025-04-28 | 29 | 2025-04-16 | 2025-04-28 |  | Walter Ulicki [25%] |
| 37 | 5.2.2 | Update Database Code - Second Cut | 4d | 2025-04-16 | 2025-04-22 | 29 | 2025-04-16 | 2025-04-22 |  | Dana Tryon |
| 38 | 5.2.3 | Update Graphics Code - Second Cut | 4d | 2025-04-16 | 2025-04-22 | 29 | 2025-04-16 | 2025-04-22 |  | Alexandra Lawler |
| 39 | 5.2.4 | Test Iteration 2 Code | 5d | 2025-04-18 | 2025-04-25 | 37FS-2d, 38FS-2d | 2025-04-18 | 2025-04-25 |  | Gitti Esmailzada |
| 40 | 5.2.5 | ITERATION #2 CODE DONE | 0d | 2025-04-25 | 2025-04-25 | 39 | 2025-04-25 | 2025-04-25 |  |  |
| 41 | 6 | **Clean Up & Final Test** | 8d | 2025-04-28 | 2025-05-08 | 35 | 2025-04-28 | 2025-05-08 |  |  |
| 42 | 6.1 | Clean up code and documentation | 2d | 2025-04-28 | 2025-04-30 | 35 | 2025-04-28 | 2025-04-30 |  | Walter Ulicki [50%]; Dana Tryon [50%]; Alexandra Lawler [50%] |
| 43 | 6.2 | Final Test | 4d | 2025-04-28 | 2025-05-02 | 35 | 2025-04-28 | 2025-05-02 |  | Gitti Esmailzada |
| 44 | 6.3 | DELIVER FINAL PROJECT DOCUMENT | 0d | 2025-05-08 | 2025-05-08 | 42, 43 | 2025-05-08 | 2025-05-08 | start no earlier than 2025-05-08 |  |
